# WBS

How a schedule from MS Project changed from version to version. A marks actual dates.

## Version 1 (saved 2020-04-15)

Note of the change: 更新进度计划相关内容

| ID | WBS | Task | Duration | Start | Finish | Predecessors | Complete | Total float |
| --- | --- | --- | --- | --- | --- | --- | --- | --- |
| 1 | 1 | **项目规划** | 30d | 2020-03-05 A | 2020-04-08 A |  | 100% |  |
| 2 | 1.1 | **合同签订** | 7d | 2020-03-05 A | 2020-03-12 A |  | 100% |  |
| 3 |  | 合同拟定 | 6d | 2020-03-05 A | 2020-03-11 A |  | 100% |  |
| 4 |  | 合同签署 | 1d | 2020-03-12 A | 2020-03-12 A | 3 | 100% |  |
| 5 | 1.2 | **项目计划阶段** | 14d | 2020-03-24 A | 2020-04-08 A | 25 | 100% |  |
| 6 |  | 项目范围计划 | 1d | 2020-03-24 A | 2020-03-24 A |  | 100% |  |
| 7 |  | 项目进度计划 | 2d | 2020-03-25 A | 2020-03-26 A | 6 | 100% |  |
| 8 |  | 项目成本计划 | 2d | 2020-03-27 A | 2020-03-28 A | 7 | 100% |  |
| 9 |  | 项目质量计划 | 2d | 2020-03-30 A | 2020-03-31 A | 8 | 100% |  |
| 10 |  | 人力资源计划 | 1d | 2020-04-01 A | 2020-04-01 A | 9 | 100% |  |
| 11 |  | 项目沟通计划 | 1d | 2020-04-02 A | 2020-04-02 A | 10 | 100% |  |
| 12 |  | 项目风险计划 | 1d | 2020-04-03 A | 2020-04-03 A | 11 | 100% |  |
| 13 |  | 项目合同计划 | 1d | 2020-04-04 A | 2020-04-04 A | 12 | 100% |  |
| 14 |  | 配置管理计划 | 1d | 2020-04-06 A | 2020-04-06 A | 13 | 100% |  |
| 15 |  | 集成项目计划 | 1d | 2020-04-07 A | 2020-04-07 A | 14 | 100% |  |
| 16 |  | 项目计划发布 | 1d | 2020-04-08 A | 2020-04-08 A | 15 | 100% |  |
| 17 | 2 | **需求分析** | 127d | 2020-03-13 A | 2020-08-07 | 4 | 6% | 25d |
| 18 | 2.1 | **需求开发** | 8d | 2020-03-13 A | 2020-03-21 A |  | 100% |  |
| 19 |  | 需求获取 | 3d | 2020-03-13 A | 2020-03-16 A |  | 100% |  |
| 20 |  | 需求分析 | 3d | 2020-03-17 A | 2020-03-19 A | 19 | 100% |  |
| 21 |  | 需求验证 | 2d | 2020-03-20 A | 2020-03-21 A | 20 | 100% |  |
| 22 | 2.2 | **需求管理** | 101d | 2020-04-13 | 2020-08-07 |  |  | 25d |
| 23 |  | 需求跟踪 | 101d | 2020-04-13 | 2020-08-07 | 26SS, 62FF |  | 25d |
| 24 |  | 需求变更控制 | 32d | 2020-07-01 | 2020-08-06 | 54SS, 61FF |  | 26d |
| 25 |  | 需求规格说明书发布 | 1d | 2020-03-23 A | 2020-03-23 A | 21 | 100% |  |
| 26 | 3 | **系统设计** | 21d | 2020-04-09 | 2020-05-02 | 16 |  | 0d |
| 27 | 3.1 | **总体设计** | 10d | 2020-04-09 | 2020-04-20 |  |  | 0d |
| 28 |  | 确定开发策略 | 2d | 2020-04-09 | 2020-04-10 |  |  | 0d |
| 29 |  | 确定开发规范 | 3d | 2020-04-11 | 2020-04-14 | 28 |  | 0d |
| 30 |  | 架构设计 | 5d | 2020-04-15 | 2020-04-20 | 29 |  | 0d |
| 31 | 3.2 | **详细设计** | 10d | 2020-04-21 | 2020-05-01 | 30 |  | 0d |
| 32 |  | 接口设计 | 2d | 2020-04-21 | 2020-04-22 |  |  | 0d |
| 33 |  | 模块设计 | 3d | 2020-04-23 | 2020-04-25 | 32 |  | 0d |
| 34 |  | 数据库设计 | 2d | 2020-04-27 | 2020-04-28 | 33 |  | 0d |
| 35 |  | 界面设计 | 3d | 2020-04-29 | 2020-05-01 | 34 |  | 0d |
| 36 |  | 设计文档发布 | 1d | 2020-05-02 | 2020-05-02 | 35 |  | 0d |
| 37 | 4 | **系统开发** | 83d | 2020-05-04 | 2020-08-07 | 36 |  | 0d |
| 38 | 4.1 | **编码** | 82d | 2020-05-04 | 2020-08-06 |  |  | 0d |
| 39 | 4.1.1 | **电脑端编码** | 50d | 2020-05-04 | 2020-06-30 |  |  | 0d |
| 40 | 4.1.1.1 | **前端开发** | 12d | 2020-05-04 | 2020-05-16 |  |  | 0d |
| 41 |  | 省用户界面 | 6d | 2020-05-04 | 2020-05-09 |  |  | 0d |
| 42 |  | 企业用户界面 | 6d | 2020-05-11 | 2020-05-16 | 41 |  | 0d |
| 43 | 4.1.1.2 | **数据库开发** | 9d | 2020-05-18 | 2020-05-27 | 40 |  | 0d |
| 44 |  | 相关表设计 | 3d | 2020-05-18 | 2020-05-20 |  |  | 0d |
| 45 |  | 相关视图设计 | 3d | 2020-05-21 | 2020-05-23 | 44 |  | 0d |
| 46 |  | 相关用户函数、触发器设计 | 3d | 2020-05-25 | 2020-05-27 | 45 |  | 0d |
| 47 | 4.1.1.3 | **服务器端开发** | 7d | 2020-05-28 | 2020-06-04 | 43 |  | 0d |
| 48 |  | 部署框架 | 4d | 2020-05-28 | 2020-06-01 |  |  | 0d |
| 49 |  | 部署数据库 | 3d | 2020-06-02 | 2020-06-04 | 48 |  | 0d |
| 50 | 4.1.1.4 | **后端开发** | 15d | 2020-06-05 | 2020-06-22 | 47 |  | 0d |
| 51 |  | 省用户后端逻辑 | 9d | 2020-06-05 | 2020-06-15 |  |  | 0d |
| 52 |  | 企业用户后端逻辑 | 6d | 2020-06-16 | 2020-06-22 | 51 |  | 0d |
| 53 |  | 系统集成 | 7d | 2020-06-23 | 2020-06-30 | 50 |  | 0d |
| 54 | 4.1.2 | **手机端编码** | 32d | 2020-07-01 | 2020-08-06 | 53 |  | 0d |
| 55 | 4.1.2.1 | **前端开发** | 10d | 2020-07-01 | 2020-07-11 |  |  | 0d |
| 56 |  | 省用户界面 | 6d | 2020-07-01 | 2020-07-07 |  |  | 0d |
| 57 |  | 企业用户界面 | 4d | 2020-07-08 | 2020-07-11 | 56 |  | 0d |
| 58 | 4.1.2.2 | **后端开发** | 15d | 2020-07-13 | 2020-07-29 | 55 |  | 0d |
| 59 |  | 省用户后端逻辑 | 9d | 2020-07-13 | 2020-07-22 |  |  | 0d |
| 60 |  | 企业用户后端逻辑 | 6d | 2020-07-23 | 2020-07-29 | 59 |  | 0d |
| 61 |  | 系统集成 | 7d | 2020-07-30 | 2020-08-06 | 58 |  | 0d |
| 62 |  | 代码复核 | 1d | 2020-08-07 | 2020-08-07 | 61 |  | 0d |
| 63 | 5 | **测试阶段** | 22d | 2020-08-08 | 2020-09-02 | 62 |  | 0d |
| 64 |  | 集成测试 | 5d | 2020-08-08 | 2020-08-13 |  |  | 0d |
| 65 |  | 系统测试 | 5d | 2020-08-14 | 2020-08-19 | 64 |  | 0d |
| 66 |  | 测试总结 | 4d | 2020-08-20 | 2020-08-24 | 65 |  | 0d |
| 67 |  | 缺陷跟踪 | 4d | 2020-08-25 | 2020-08-28 | 66 |  | 0d |
| 68 |  | 手册编写 | 3d | 2020-08-29 | 2020-09-01 | 67 |  | 0d |
| 69 |  | 测试报告发布 | 1d | 2020-09-02 | 2020-09-02 | 68 |  | 0d |
| 70 | 6 | **产品交付** | 3d | 2020-09-03 | 2020-09-05 | 69 |  | 0d |

| ID | Task | Duration | Start | Finish | Predecessors | Total float |
| --- | --- | --- | --- | --- | --- | --- |
| 71 | 验收测试 | 2d | 2020-09-03 | 2020-09-04 |  | 0d |
| 72 | 产品提交 | 1d | 2020-09-05 | 2020-09-05 | 71 | 0d |
| 73 | 用户手册提交 | 1d | 2020-09-05 | 2020-09-05 | 72SS | 0d |

## Version 2 (saved 2020-04-16)

Note of the change: 更新成本计划相关内容

Last finish 2020-09-05 → 2020-09-10 (+5d).

Changed:

| ID | Task | Start | Finish | Duration | Predecessors | Other |
| --- | --- | --- | --- | --- | --- | --- |
| 17 | **需求分析** |  | 2020-08-07 → 2020-08-12 (+5d) | 127d → 131d |  |  |
| 22 | **需求管理** | 2020-04-13 → 2020-04-09 (-4d) | 2020-08-07 → 2020-08-12 (+5d) | 101d → 108d |  |  |
| 23 | 需求跟踪 | 2020-04-13 → 2020-04-09 (-4d) | 2020-08-07 → 2020-08-12 (+5d) | 101d → 108d | 26SS, 62FF → 26SS | constraint none → start no earlier than 2020-04-09 |
| 24 | 需求变更控制 |  |  |  | 54SS, 61FF → 54SS |  |
| 37 | **系统开发** |  | 2020-08-07 → 2020-08-12 (+5d) | 83d → 87d |  |  |
| 62 | 代码复核 |  | 2020-08-07 → 2020-08-12 (+5d) | 1d → 5d |  | resources none → 冯开宇; 李金; 饶东来 |
| 63 | **测试阶段** | 2020-08-08 → 2020-08-13 (+5d) | 2020-09-02 → 2020-09-07 (+5d) |  |  |  |
| 64 | 集成测试 | 2020-08-08 → 2020-08-13 (+5d) | 2020-08-13 → 2020-08-18 (+5d) |  |  |  |
| 65 | 系统测试 | 2020-08-14 → 2020-08-19 (+5d) | 2020-08-19 → 2020-08-24 (+5d) |  |  |  |
| 66 | 测试总结 | 2020-08-20 → 2020-08-25 (+5d) | 2020-08-24 → 2020-08-28 (+4d) |  |  |  |
| 67 | 缺陷跟踪 | 2020-08-25 → 2020-08-29 (+4d) | 2020-08-28 → 2020-09-02 (+5d) |  |  |  |
| 68 | 手册编写 | 2020-08-29 → 2020-09-03 (+5d) | 2020-09-01 → 2020-09-05 (+4d) |  |  |  |
| 69 | 测试报告发布 | 2020-09-02 → 2020-09-07 (+5d) | 2020-09-02 → 2020-09-07 (+5d) |  |  |  |
| 70 | **产品交付** | 2020-09-03 → 2020-09-08 (+5d) | 2020-09-05 → 2020-09-10 (+5d) |  |  |  |
| 71 | 验收测试 | 2020-09-03 → 2020-09-08 (+5d) | 2020-09-04 → 2020-09-09 (+5d) |  |  |  |
| 72 | 产品提交 | 2020-09-05 → 2020-09-10 (+5d) | 2020-09-05 → 2020-09-10 (+5d) |  |  |  |
| 73 | 用户手册提交 | 2020-09-05 → 2020-09-10 (+5d) | 2020-09-05 → 2020-09-10 (+5d) |  |  |  |
